# TieLu

Schedule from MS Project, 2014-07-22 to 2014-08-15.

## Calendars

- Standard: Mon-Fri 08:00-12:00, 13:00-17:00; Sat-Sun off.

## Resources

| Resource |
| --- |
| 채성철 |
| 리금성 |

## Schedule

| ID | WBS | Task | Type | Duration | Start | Finish | Predecessors | Total slack | Free slack | Constraint | Resources | Work |
| --- | --- | --- | --- | --- | --- | --- | --- | --- | --- | --- | --- | --- |
| 1 | 1 | **철도정보화체계** |  | 19d | 2014-07-22 | 2014-08-15 |  | 0d |  |  |  | 832h |
| 2 | 1.1 | 요구분석 및 자료기지설계 |  | 4d | 2014-07-22 | 2014-07-25 |  | 7d | 0d | finish no earlier than 2014-07-25 | 채성철 | 32h |
| 3 | 1.2 | **홈페지개발** |  | 17d | 2014-07-22 | 2014-08-13 |  | 0d |  |  | 채성철 | 376h |
| 4 | 1.2.1 | 登录 | manual | 2d | 2014-07-22 | 2014-07-23 |  |  |  |  | 채성철 | 16h |
| 5 | 1.2.2 | **基础数据** |  | 3d | 2014-07-24 | 2014-07-27 |  |  |  |  | 채성철 | 104h |
| 6 | 1.2.2.1 | 段管理 |  | 1d | 2014-07-24 | 2014-07-24 |  | 1d |  |  | 채성철 | 8h |
| 7 | 1.2.2.2 | 部门管理 | manual | 1d | 2014-07-24 | 2014-07-24 |  |  |  |  | 채성철 | 8h |
| 8 | 1.2.2.3 | 车队管理 | manual | 1d | 2014-07-24 | 2014-07-24 |  |  |  |  | 채성철 | 8h |
| 9 | 1.2.2.4 | 班组管理 | manual | 1d | 2014-07-25 | 2014-07-25 |  |  |  |  | 채성철 | 8h |
| 10 | 1.2.2.5 | 线路管理 | manual | 1d | 2014-07-25 | 2014-07-25 |  |  |  |  | 채성철 | 8h |
| 11 | 1.2.2.6 | 车次管理 | manual | 1d | 2014-07-26 | 2014-07-26 |  |  |  |  | 채성철 | 8h |
| 12 | 1.2.2.7 | 先点管理 | manual | 2d | 2014-07-26 | 2014-07-27 |  |  |  |  | 채성철 | 16h |
| 13 | 1.2.2.8 | 出乘管理 | manual | 2d | 2014-07-26 | 2014-07-27 |  |  |  |  | 채성철 | 16h |
| 14 | 1.2.3 | **干部考核** |  | 3d | 2014-07-28 | 2014-07-30 | 5 |  |  |  | 채성철 | 24h |
| 15 | 1.2.3.1 | 考核录入 | manual | 1d | 2014-07-28 | 2014-07-28 |  |  |  |  |  |  |
| 16 | 1.2.3.2 | 考核查询 | manual | 1d | 2014-07-29 | 2014-07-29 |  |  |  |  |  |  |
| 17 | 1.2.3.3 | 结果分析 | manual | 1d | 2014-07-30 | 2014-07-30 |  |  |  |  |  |  |
| 18 | 1.2.4 | **公文流转** |  | 3d | 2014-07-31 | 2014-08-04 |  |  |  |  | 채성철 | 24h |
| 19 | 1.2.4.1 | 公文发布 | manual | 2d | 2014-07-31 | 2014-08-01 |  |  |  |  |  |  |
| 20 | 1.2.4.2 | 公文查询 | manual | 2d | 2014-08-02 | 2014-08-03 |  |  |  |  |  |  |
| 21 | 1.2.4.3 | 公文待签 | manual | 1d | 2014-08-04 | 2014-08-04 |  |  |  |  |  |  |
| 22 | 1.2.4.4 | 已收公文 | manual | 1d | 2014-08-04 | 2014-08-04 |  |  |  |  |  |  |
| 23 | 1.2.5 | **任务管理** |  | 3d | 2014-08-05 | 2014-08-07 |  |  |  |  | 채성철 | 24h |
| 24 | 1.2.5.1 | 发布任务 |  | 2d? | 2014-08-05 | 2014-08-06 |  | 6d |  | start no earlier than 2014-08-05 |  |  |
| 25 | 1.2.5.2 | 任务查询 |  | 2d? | 2014-08-06 | 2014-08-07 |  | 5d |  | finish no earlier than 2014-08-07 |  |  |
| 26 | 1.2.6 | 规章查询 | manual | 2d | 2014-08-08 | 2014-08-09 |  |  |  |  | 채성철 | 16h |
| 27 | 1.2.7 | 通讯录 | manual | 2d | 2014-08-10 | 2014-08-11 |  |  |  |  | 채성철 | 16h |
| 28 | 1.2.8 | 기타기능 | manual | 2d | 2014-08-12 | 2014-08-13 |  |  |  |  | 채성철 | 16h |

| ID | WBS | Task | Type | Duration | Start | Finish | Predecessors | Total slack | Resources | Work |
| --- | --- | --- | --- | --- | --- | --- | --- | --- | --- | --- |
| 29 | 1.3 | **Android말단개발** |  | 15d | 2014-07-22 | 2014-08-11 |  | 0d | 리금성 | 248h |
| 30 | 1.3.1 | 登录 | manual | 2d | 2014-07-22 | 2014-07-23 |  |  | 리금성 | 16h |
| 31 | 1.3.2 | 干部考核 | manual | 3d | 2014-07-24 | 2014-07-28 |  |  | 리금성 | 24h |
| 32 | 1.3.3 | 公文流转 | manual | 4d | 2014-07-29 | 2014-08-01 |  |  | 리금성 | 32h |
| 33 | 1.3.4 | 任务管理 | manual | 3d | 2014-08-02 | 2014-08-05 |  |  | 리금성 | 24h |
| 34 | 1.3.5 | 规章查询 | manual | 2d | 2014-08-06 | 2014-08-07 |  |  | 리금성 | 16h |
| 35 | 1.3.6 | 通讯录 | manual | 2d | 2014-08-08 | 2014-08-11 |  |  | 리금성 | 16h |
| 36 | 1.4 | Web서비스개발 | manual | 8d | 2014-07-28 | 2014-08-06 | 2, 5 |  | 리금성 | 64h |
| 37 | 1.5 | **모듈검사 및 체계검사** |  | 4d | 2014-08-12 | 2014-08-15 | 3, 29 |  | 리금성; 채성철 | 112h |
| 38 | 1.5.1 | 관리페지검사 | manual | 1d | 2014-08-14 | 2014-08-14 | 3 |  | 채성철 | 8h |
| 39 | 1.5.2 | 손전화단검사 | manual | 3d | 2014-08-12 | 2014-08-14 | 29 |  | 리금성 | 24h |
| 40 | 1.5.3 | 련동시험 | manual | 1d | 2014-08-15 | 2014-08-15 | 38, 39 |  | 리금성; 채성철 | 16h |
